| id | project_id | parent_id | code | name | kind | work_front | status | priority | sort_order | duration | constraint_type | percent | owner_id | version | created_by | created_at | updated_at | actual_start | actual_finish | budget_line | notes | constraint_date | deliverable |
| --- | --- | --- | --- | --- | --- | --- | --- | --- | --- | --- | --- | --- | --- | --- | --- | --- | --- | --- | --- | --- | --- | --- | --- |
| 1 | 1 | 0 | 1 | Gestión del proyecto | summary | gestion | pendiente | 2 | 0 | 21 | asap | 0 | 1 | 1 | 1 | 2026-09-30 12:00:00 | 2026-09-30 12:00:00 |  |  |  |  |  |  |
| 2 | 1 | 1 | 1.1 | Contratación del equipo profesional a honorarios | activity | gestion | terminada | 2 | 1 | 21 | asap | 100 | 7 | 1 | 1 | 2026-09-30 12:00:00 | 2026-09-30 12:00:00 | 2026-06-01 | 2026-06-30 | personal | Cinco contratos firmados (Oficio 701/2026: solo profesionales a honorarios fuera de la jornada ordinaria). Entrega de estados el tercer viernes de cada mes; pago el último día hábil. |  |  |
| 3 | 1 | 1 | 1.2 | Presentación de estado de avance ante la Dirección de Investigación | milestone | gestion | pendiente | 2 | 2 | 0 | mso | 0 | 1 | 1 | 1 | 2026-09-30 12:00:00 | 2026-09-30 12:00:00 |  |  |  |  | 2026-09-30 | Presentación en la plantilla institucional (PDF y editable) |
| 4 | 1 | 1 | 1.3 | Informe técnico de avance N.º 1 (habilita la cuota 2) | milestone | gestion | pendiente | 1 | 3 | 0 | mso | 0 | 2 | 1 | 1 | 2026-09-30 12:00:00 | 2026-09-30 12:00:00 |  |  |  |  | 2026-10-30 | Informe técnico de avance N.º 1 |
| 5 | 1 | 1 | 1.4 | Informe técnico de avance N.º 2 (habilita la cuota 3) | milestone | gestion | pendiente | 2 | 4 | 0 | mso | 0 | 2 | 1 | 1 | 2026-09-30 12:00:00 | 2026-09-30 12:00:00 |  |  |  |  | 2027-03-31 | Informe técnico de avance N.º 2 |
| 6 | 1 | 1 | 1.5 | Rendiciones mensuales al Gobierno Regional | activity | gestion | en_curso | 2 | 5 | 480 | asap | 15 | 7 | 1 | 1 | 2026-09-30 12:00:00 | 2026-09-30 12:00:00 | 2026-07-01 |  |  | Dentro de los 15 días hábiles del mes siguiente; documentación a Constanza Molina en 8 días hábiles para subirla a la plataforma de rendición. |  |  |
| 7 | 1 | 0 | 2 | Caracterización de relaves (Producto 1) | summary | caracterizacion | pendiente | 2 | 0 | 21 | asap | 0 | 5 | 1 | 1 | 2026-09-30 12:00:00 | 2026-09-30 12:00:00 |  |  |  |  |  |  |
| 8 | 1 | 7 | 2.1 | Campaña de extracción de muestras | activity | caracterizacion | terminada | 2 | 1 | 5 | asap | 100 | 5 | 1 | 1 | 2026-09-30 12:00:00 | 2026-09-30 12:00:00 | 2026-06-15 | 2026-06-19 | generales | Campaña del 17 de junio de 2026 en el sector de Tambillos; coordenadas de los puntos A a K pendientes de verificación contra el dispositivo GPS. |  | Muestras de relave (11 puntos, cerca de 100 kg) |
| 9 | 1 | 7 | 2.2 | Informe de ingeniería de perfil preliminar de relaves y uso circular | activity | caracterizacion | en_curso | 2 | 2 | 42 | asap | 50 | 3 | 1 | 1 | 2026-09-30 12:00:00 | 2026-09-30 12:00:00 | 2026-06-01 |  |  |  |  | Informe de perfil de relaves |
| 10 | 1 | 7 | 2.3 | Contratación de laboratorios (estrategia tripartita) | activity | caracterizacion | en_curso | 2 | 3 | 63 | asap | 70 | 2 | 1 | 1 | 2026-09-30 12:00:00 | 2026-09-30 12:00:00 | 2026-06-02 |  | subcontratos | Aprobada por Oficio 2178/2026. Geoquímica y ambiental (AGQ), mineralogía (SAX) y ensayos físicos (sin proveedor tras la anulación de Castro Ingeniería). |  |  |
| 11 | 1 | 7 | 2.4 | Ensayos geoquímicos y ambientales (TCLP, ABA, NAG, ME 4A, humedad y granulometría) | activity | caracterizacion | en_curso | 2 | 4 | 25 | asap | 80 | 5 | 1 | 1 | 2026-09-30 12:00:00 | 2026-09-30 12:00:00 | 2026-08-19 |  | subcontratos | Siete muestras ingresadas el 19 de agosto y ya analizadas; resultados retenidos hasta la emisión de la orden de compra. |  | Informes de ensayo de las siete muestras |
| 12 | 1 | 7 | 2.5 | Ensayos mineralógicos por difracción de rayos X | activity | caracterizacion | pendiente | 2 | 5 | 25 | snet | 0 | 4 | 1 | 1 | 2026-09-30 12:00:00 | 2026-09-30 12:00:00 |  |  | subcontratos | Orden de compra 4500004674 emitida; muestras pendientes de despacho a Ñuñoa. | 2026-10-05 | Informe de mineralogía de cuatro muestras |
| 13 | 1 | 7 | 2.6 | Ensayos físicos (densidades, sulfatos y cloruros) | activity | caracterizacion | pendiente | 1 | 6 | 25 | snet | 0 | 2 | 1 | 1 | 2026-09-30 12:00:00 | 2026-09-30 12:00:00 |  |  | subcontratos | Brecha: la orden a Castro Ingeniería se anuló el 3 de septiembre por exigir pago anticipado; se requiere nuevo proveedor. | 2026-10-19 |  |
| 14 | 1 | 7 | 2.7 | Informe de caracterización físico-química y geoquímica | activity | caracterizacion | pendiente | 1 | 7 | 21 | asap | 0 | 5 | 1 | 1 | 2026-09-30 12:00:00 | 2026-09-30 12:00:00 |  |  |  |  |  | Informe técnico de caracterización físico-química y geoquímica de relaves |
| 15 | 1 | 0 | 3 | Diseño de mezclas y prototipado (Productos 2 y 3) | summary | mezclas | pendiente | 2 | 0 | 21 | asap | 0 | 4 | 1 | 1 | 2026-09-30 12:00:00 | 2026-09-30 12:00:00 |  |  |  |  |  |  |
| 16 | 1 | 15 | 3.1 | Estado del arte: relaves como material cementicio suplementario | activity | mezclas | en_curso | 2 | 1 | 42 | asap | 30 | 4 | 1 | 1 | 2026-09-30 12:00:00 | 2026-09-30 12:00:00 | 2026-08-03 |  |  | Marco de evaluación: índice de actividad resistente según ASTM C311 y C618; se descarta la sustitución de árido fino (NCh 163). |  |  |
| 17 | 1 | 15 | 3.2 | Diseño de cinco o seis alternativas de mezcla | activity | mezclas | pendiente | 2 | 2 | 42 | snet | 0 | 4 | 1 | 1 | 2026-09-30 12:00:00 | 2026-09-30 12:00:00 |  |  |  |  | 2026-11-02 | Informe de especificación de mezclas |
| 18 | 1 | 15 | 3.3 | Implementación del laboratorio de prefabricados (prensa hidráulica, sala C-106) | activity | mezclas | pendiente | 2 | 3 | 42 | snet | 0 | 6 | 1 | 1 | 2026-09-30 12:00:00 | 2026-09-30 12:00:00 |  |  | inversion | Ventana ideal enero y febrero de 2027. Jorge Concha a cargo de la prensa hidráulica de compresión. | 2027-01-04 |  |
| 19 | 1 | 15 | 3.4 | Pruebas de prototipo inicial | activity | mezclas | pendiente | 2 | 4 | 42 | asap | 0 | 6 | 1 | 1 | 2026-09-30 12:00:00 | 2026-09-30 12:00:00 |  |  | generales |  |  | Prototipos de palmetas (40 x 40 cm, 5 y 6 cm de espesor) |
| 20 | 1 | 15 | 3.5 | Validación técnica en laboratorio | activity | mezclas | pendiente | 2 | 5 | 42 | asap | 0 | 3 | 1 | 1 | 2026-09-30 12:00:00 | 2026-09-30 12:00:00 |  |  |  | Incluye ensayos de lixiviación sobre el producto terminado para demostrar inocuidad. |  | Informe de validación de laboratorio |
| 21 | 1 | 15 | 3.6 | Informe N.º 2: mezclas inertes factibles de industrializar | activity | mezclas | pendiente | 2 | 6 | 21 | asap | 0 | 4 | 1 | 1 | 2026-09-30 12:00:00 | 2026-09-30 12:00:00 |  |  |  |  |  | Informe de mezclas |
| 22 | 1 | 15 | 3.7 | Cotización y compra de equipamiento de planta piloto | activity | mezclas | pendiente | 2 | 7 | 21 | asap | 0 | 2 | 1 | 1 | 2026-09-30 12:00:00 | 2026-09-30 12:00:00 |  |  | inversion | Mezclador planetario y vibrocompactador estacionario; proveedores de referencia en Santiago y Colombia. Sobre 3 millones de pesos se requiere contrato. |  | Listado de cotizaciones y expediente de contrato |
| 23 | 1 | 0 | 4 | Pilotaje e infraestructura comunitaria (Productos 4 y 5) | summary | piloto | pendiente | 2 | 0 | 21 | asap | 0 | 1 | 1 | 1 | 2026-09-30 12:00:00 | 2026-09-30 12:00:00 |  |  |  |  |  |  |
| 24 | 1 | 23 | 4.1 | Reunión con la Secretaría Regional Ministerial y visto bueno de la plaza | activity | piloto | pendiente | 2 | 1 | 10 | snet | 0 | 1 | 1 | 1 | 2026-09-30 12:00:00 | 2026-09-30 12:00:00 |  |  |  | Presentar la autorización del Gobierno Regional y solicitar el visto bueno para la plaza comunitaria. | 2026-10-12 |  |
| 25 | 1 | 23 | 4.2 | Pilotaje de prefabricados y evaluación comunitaria | activity | piloto | pendiente | 2 | 2 | 21 | asap | 0 | 1 | 1 | 1 | 2026-09-30 12:00:00 | 2026-09-30 12:00:00 |  |  |  |  |  | Prototipo funcional y evaluación comunitaria |
| 26 | 1 | 23 | 4.3 | Desarrollo de la infraestructura: plaza comunitaria | activity | piloto | pendiente | 2 | 3 | 84 | asap | 0 | 6 | 1 | 1 | 2026-09-30 12:00:00 | 2026-09-30 12:00:00 |  |  | inversion |  |  | Infraestructura completada |
| 27 | 1 | 0 | 5 | Difusión y capacitación | summary | difusion | pendiente | 2 | 0 | 21 | asap | 0 | 2 | 1 | 1 | 2026-09-30 12:00:00 | 2026-09-30 12:00:00 |  |  |  |  |  |  |
| 28 | 1 | 27 | 5.1 | Evento de difusión de inicio del proyecto | activity | difusion | pendiente | 2 | 1 | 10 | snet | 0 | 1 | 1 | 1 | 2026-09-30 12:00:00 | 2026-09-30 12:00:00 |  |  | difusion |  | 2026-11-02 |  |
| 29 | 1 | 27 | 5.2 | Curso de capacitación con la Universidad Católica (reología, material cementicio suplementario y prototipado) | activity | difusion | pendiente | 2 | 2 | 15 | snet | 0 | 2 | 1 | 1 | 2026-09-30 12:00:00 | 2026-09-30 12:00:00 |  |  | capacitacion | Diez participantes, diez horas, certificado de participación; pendientes el contrato (antecedentes legales) y la recalendarización. | 2026-11-16 |  |
| 30 | 1 | 27 | 5.3 | Resumen para el congreso en Colombia (noviembre de 2026) | milestone | difusion | pendiente | 1 | 3 | 0 | mso | 0 | 1 | 1 | 1 | 2026-09-30 12:00:00 | 2026-09-30 12:00:00 |  |  |  |  | 2026-10-02 |  |
| 31 | 1 | 27 | 5.4 | Artículo para revista indexada (revisión por pares) | activity | difusion | en_curso | 2 | 4 | 21 | asap | 60 | 2 | 1 | 1 | 2026-09-30 12:00:00 | 2026-09-30 12:00:00 | 2026-09-01 |  |  |  |  | Manuscrito enviado |
| 32 | 1 | 27 | 5.5 | Informe final y difusión de resultados (Producto 6) | activity | difusion | pendiente | 2 | 5 | 21 | asap | 0 | 1 | 1 | 1 | 2026-09-30 12:00:00 | 2026-09-30 12:00:00 |  |  |  |  |  | Informe final |
| 33 | 1 | 27 | 5.6 | Evento de cierre y difusión de resultados | activity | difusion | pendiente | 2 | 6 | 10 | asap | 0 | 1 | 1 | 1 | 2026-09-30 12:00:00 | 2026-09-30 12:00:00 |  |  | difusion |  |  |  |

Links (id, project_id, predecessor_type, predecessor_id, successor_id, type, lag_days, created_at):
- 1 1 activity 8 9 FS 0 2026-09-30 12:00:00
- 2 1 activity 8 10 FS 0 2026-09-30 12:00:00
- 3 1 activity 10 11 FS 0 2026-09-30 12:00:00
- 4 1 activity 10 12 FS 0 2026-09-30 12:00:00
- 5 1 activity 10 13 FS 0 2026-09-30 12:00:00
- 6 1 activity 11 14 FS 0 2026-09-30 12:00:00
- 7 1 activity 12 14 FS 0 2026-09-30 12:00:00
- 8 1 activity 13 14 FS 0 2026-09-30 12:00:00
- 9 1 activity 9 28 FS 0 2026-09-30 12:00:00
- 10 1 activity 14 17 FS 0 2026-09-30 12:00:00
- 11 1 activity 16 17 FS 0 2026-09-30 12:00:00
- 12 1 activity 17 19 FS 0 2026-09-30 12:00:00
- 13 1 activity 18 19 FS 0 2026-09-30 12:00:00
- 14 1 activity 19 20 FS 0 2026-09-30 12:00:00
- 15 1 activity 20 21 FS 0 2026-09-30 12:00:00
- 16 1 activity 20 22 FS 0 2026-09-30 12:00:00
- 17 1 activity 21 25 FS 0 2026-09-30 12:00:00
- 18 1 activity 22 25 FS 0 2026-09-30 12:00:00
- 19 1 activity 24 25 FS 0 2026-09-30 12:00:00
- 20 1 activity 25 26 FS 0 2026-09-30 12:00:00
- 21 1 activity 26 32 FS 0 2026-09-30 12:00:00
- 22 1 activity 32 33 FS 0 2026-09-30 12:00:00
- 23 1 activity 14 4 FS 0 2026-09-30 12:00:00
